Schedule from GanttProject, 2012-05-09 to 2012-08-29.

## Calendars

- Project calendar: Mon-Fri working; Sat-Sun off.

## Resources

| Resource |
| --- |
| Lei Zhang |
| Naizheng Wang |
| Chao Liu |

## Schedule

| ID | WBS | Task | Duration | Start | Finish | Predecessors | Resources |
| --- | --- | --- | --- | --- | --- | --- | --- |
| 1 | 1 | **项目启动** | 23d | 2012-05-09 | 2012-06-08 |  |  |
| 2 | 1.1 | 环境搭建 | 1d | 2012-05-09 | 2012-05-09 |  | Chao Liu |
| 3 | 1.2 | 需求分析 | 23d | 2012-05-09 | 2012-06-08 |  | Lei Zhang; Naizheng Wang; Chao Liu |
| 4 | 1.3 | 项目设计 | 15d | 2012-05-21 | 2012-06-08 |  |  |
| 5 | 1.4 | 框架搭建 | 15d | 2012-05-21 | 2012-06-08 |  | Chao Liu |
| 6 | 1.5 | 开发计划拟定 | 15d | 2012-05-21 | 2012-06-08 |  | Lei Zhang |
| 7 | 1.6 | 合同签署 | 1d | 2012-06-08 | 2012-06-08 |  | Lei Zhang |
| 8 | 2 | **项目开发** | 37d | 2012-06-11 | 2012-07-31 | 1 | Lei Zhang; Naizheng Wang; Chao Liu |
| 9 | 2.1 | **用户管理** | 14d | 2012-06-11 | 2012-06-28 |  | Lei Zhang |
| 10 | 2.1.1 | **管理员人员管理** | 11d | 2012-06-11 | 2012-06-25 |  | Lei Zhang |
| 11 | 2.1.1.1 | **个人信息管理** | 4d | 2012-06-11 | 2012-06-14 |  | Lei Zhang |
| 12 | 2.1.1.1.1 | 密码管理 | 2d | 2012-06-11 | 2012-06-12 |  |  |
| 13 | 2.1.1.1.2 | 信息管理 | 2d | 2012-06-13 | 2012-06-14 | 12 |  |
| 14 | 2.1.1.2 | **用户管理** | 7d | 2012-06-15 | 2012-06-25 | 11 |  |
| 15 | 2.1.1.2.1 | 添加用户 | 2d | 2012-06-15 | 2012-06-18 |  |  |
| 16 | 2.1.1.2.2 | 查看用户 | 2d | 2012-06-19 | 2012-06-20 | 15 |  |
| 17 | 2.1.1.2.3 | 删除用户 | 1d | 2012-06-21 | 2012-06-21 | 16 |  |
| 18 | 2.1.1.2.4 | 审核用户 | 2d | 2012-06-22 | 2012-06-25 | 17 |  |
| 19 | 2.1.2 | **个人信息管理** | 3d | 2012-06-26 | 2012-06-28 | 10 | Lei Zhang |
| 20 | 2.1.2.1 | 密码管理 | 2d | 2012-06-26 | 2012-06-27 |  | Lei Zhang |
| 21 | 2.1.2.2 | 信息管理 | 1d | 2012-06-28 | 2012-06-28 | 20 | Lei Zhang |
| 22 | 2.2 | **安全组** | 10d | 2012-06-29 | 2012-07-12 | 9 | Lei Zhang |
| 23 | 2.2.1 | **管理员功能** | 8d | 2012-06-29 | 2012-07-10 |  |  |
| 24 | 2.2.1.1 | 增加安全组 | 2d | 2012-06-29 | 2012-07-02 |  |  |
| 25 | 2.2.1.2 | 创建规则 | 2d | 2012-07-03 | 2012-07-04 | 24 |  |
| 26 | 2.2.1.3 | 添加删除安全组成员 | 2d | 2012-07-05 | 2012-07-06 | 25 |  |
| 27 | 2.2.1.4 | 关联规则设置 | 2d | 2012-07-09 | 2012-07-10 | 26 |  |
| 28 | 2.2.2 | 个人安全组 | 2d | 2012-07-11 | 2012-07-12 | 23 |  |

Notes:
- 11: 1.1 密码管理 / 功能描述：对系统管理员自身的密码进行修改。修改时需要进行身份二次确认。 / 1.2 信息管理 / 功能描述：对系统管理员自己的信息进行管理或者修改。 / 需明确信息涵盖的内容
- 12: 功能描述：对系统管理员自身的密码进行修改。修改时需要进行身份二次
- 13: 功能描述：对系统管理员自己的信息进行管理或者修改。
- 15: 功能描述：添加一个普通用户，添加用户成功之后发送通知邮件给用户。
- 16: 功能描述：查看所有用户列表，可按照一定条件查询用户列表，并可对单个用户进行查询操作了解单个用户详细信息。可以手动设置账户是否激活。
- 17: 功能描述：支持删除单个用户和批量删除用户。支持按照一定条件查询用户之后再做批量删除。
- 18: 功能描述：处理用户注册申请，对用户进行审核。可设置用户状态，比如，暂停，禁止，恢复等等。支持按照一定条件查询用户之后再做审核。
- 20: 功能描述：对用户自身的密码进行修改。修改时需要进行身份二次确认。
- 21: 功能描述：对用户自己的信息进行管理或者修改。
- 22: 安全组组名，级别，组成员，安全组权限 创建规则 / 功能描述：提供对虚拟机安全组的管理
- 28: 功能描述：按照自己的虚拟机所做功能，将自己的虚拟机加入相应安全组，或者更改所属安全组。

| ID | WBS | Task | Duration | Start | Finish | Predecessors | Resources |
| --- | --- | --- | --- | --- | --- | --- | --- |
| 29 | 2.3 | **组管理** | 7d | 2012-07-13 | 2012-07-23 | 22 | Lei Zhang |
| 30 | 2.3.1 | 添加用户组 | 2d | 2012-07-13 | 2012-07-16 |  |  |
| 31 | 2.3.2 | 查看用户组 | 2d | 2012-07-17 | 2012-07-18 | 30 | Lei Zhang |
| 32 | 2.3.3 | 删除用户组 | 2d | 2012-07-19 | 2012-07-20 | 30, 31 |  |
| 33 | 2.3.4 | 添加删除用户组成员 | 1d | 2012-07-23 | 2012-07-23 | 32 |  |
| 34 | 2.4 | **权限管理** | 2d | 2012-07-24 | 2012-07-25 | 29 | Lei Zhang |
| 35 | 2.4.1 | 给组设置权限 | 2d | 2012-07-24 | 2012-07-25 |  |  |
| 36 | 2.5 | **设备管理** | 8d | 2012-06-11 | 2012-06-20 |  | Naizheng Wang |
| 37 | 2.5.1 | 区域管理 | 2d | 2012-06-11 | 2012-06-12 |  |  |
| 38 | 2.5.2 | 机房管理 | 2d | 2012-06-13 | 2012-06-14 | 37 |  |
| 39 | 2.5.3 | 机柜管理 | 2d | 2012-06-15 | 2012-06-18 | 4, 38 |  |
| 40 | 2.5.4 | 实体机管理 | 2d | 2012-06-19 | 2012-06-20 | 39 |  |
| 41 | 2.6 | **定价管理** | 8d | 2012-06-21 | 2012-07-02 | 36 | Naizheng Wang |
| 42 | 2.6.1 | 配置价格 | 2d | 2012-06-21 | 2012-06-22 |  |  |
| 43 | 2.6.2 | 带宽价格 | 2d | 2012-06-25 | 2012-06-26 | 42 |  |
| 44 | 2.6.3 | 镜像价格 | 2d | 2012-06-27 | 2012-06-28 | 43 |  |
| 45 | 2.6.4 | 模板价格 | 2d | 2012-06-29 | 2012-07-02 | 44 |  |
| 46 | 2.7 | **审核管理** | 4d | 2012-07-03 | 2012-07-06 | 41 | Naizheng Wang |
| 47 | 2.7.1 | 个人申请管理 | 2d | 2012-07-03 | 2012-07-04 |  |  |
| 48 | 2.7.2 | 待解决申请数量 | 2d | 2012-07-05 | 2012-07-06 | 47 |  |
| 49 | 2.8 | **组件管理** | 4d | 2012-07-09 | 2012-07-12 | 46 | Naizheng Wang |
| 50 | 2.8.1 | 节点控制器管理 | 2d | 2012-07-09 | 2012-07-10 |  | Naizheng Wang |
| 51 | 2.8.2 | 集群控制器 | 2d | 2012-07-11 | 2012-07-12 | 50 |  |
| 52 | 2.9 | **key-pairs** | 3d | 2012-07-13 | 2012-07-17 | 49 | Lei Zhang |
| 53 | 2.9.1 | 管理员 | 2d | 2012-07-13 | 2012-07-16 |  |  |
| 54 | 2.9.2 | 个人 | 1d | 2012-07-17 | 2012-07-17 | 53 |  |

Notes:
- 34: 功能描述：为用户组设置权限，动态配置用户组的权限。
- 35: 功能描述：为用户组设置权限，动态配置用户组的权限。
- 37: 区域的具体定义？
- 38: 提供在任意区域中添加删除机房功能，并可对机房信息进行修改，支持对机房的监控功能，监控信息包括机房内服务器总数，正常服务器数，故障服务器数，交换机总数，正常交换机数，故障交换机数，盘阵总数，正常盘阵，故障盘阵，虚拟机总数，正常虚拟机数，故障虚拟机数。点击可查看任意实体的详细信息。
- 39: 提供在任意机房中添加删除机柜功能，并可对机柜信息进行修改，支持对机柜的监控功能，监控内容包括：机柜内服务器总数，正常服务器数，故障服务器数，交换机总数，正常交换机数，故障交换机数，盘阵总数，正常盘阵，故障盘阵，虚拟机总数，正常虚拟机数，故障虚拟机数。点击可查看任意实体的详细信息。
- 40: 提供在任意机柜中添加删除实体机功能，并可对实体机信息进行修改，点击可查看实体机的当前详细信息。
- 42: 所有配置的定价功能，包括：CPU定价，内存定价，硬盘定价等等
- 43: 带宽的定价功能 / 具体的价格描述？
- 44: 镜像的定价功能 / 具体定义？
- 45: 模板的定价功能
- 47: 功能描述：提出对系统资源的使用申请，包括cpu，内存，硬盘，带宽，ip等资源。显示正被处理申请数量，已通过申请数量，未通过申请数量，本地未提交申请数量列表，若点击列表的某一项，则在页面下方展示此项里面所有申请的列表，并可选择列表中的任意一项进行查看该申请的详细内容，并进行操作，包括创建申请，删除申请，更改申请等等，其中创建申请操作为：可以直接按照已有模板进行申请， 也可以自己选择CPU，内存，硬盘，带宽，镜像等全部信息进行申请。若申请被拒绝，可以按照管理员的相关提示进行修改申请然后重新申请。
- 48: 功能描述：对普通用户提出的虚拟机或者资源的使用申请进行审核。显示待解决申请数量，已处理申请数量，正在处理申请数量，总申请数量列表，若点击列表的某一项，则在页面下方展示此项里面所有申请的列表，并可选择列表中的任意一项进行查看该申请的详细内容，并进行操作，包括审核，删除，更改等等，其中审核操作为：若能够提供用户的申请，则直接通过审核。若不能提供用户的需求，则不通过审核，并通知用户不通过的原因。
- 50: 功能描述：对系统主要节点的列表，并可选择任意一个节点进行查看详细信息并进行一系列操作。详细内容包括：ip，端口号，状态。操作包括：注册，注销
- 51: 功能描述：对系统主要控制器的列表，并可选择任意一个控制器进行查看详细信息并进行一系列操作。详细内容包括：ip，端口号，状态，类型。操作包括：注册，注销
- 53: 功能描述：提供对所有key的管理，主要功能有：增加key，删除key，编辑key,以及延长有效期。
- 54: 功能描述：提供对自己key的管理。

| ID | WBS | Task | Duration | Start | Finish | Predecessors | Resources |
| --- | --- | --- | --- | --- | --- | --- | --- |
| 55 | 2.10 | **日志管理** | 4d | 2012-07-18 | 2012-07-23 | 52 | Naizheng Wang |
| 56 | 2.10.1 | 管理员 | 2d | 2012-07-18 | 2012-07-19 |  |  |
| 57 | 2.10.2 | 个人 | 2d | 2012-07-20 | 2012-07-23 | 56 |  |
| 58 | 2.11 | **统计管理** | 4d | 2012-07-24 | 2012-07-27 |  | Naizheng Wang |
| 59 | 2.11.1 | **内存、硬盘使用率** | 4d | 2012-07-24 | 2012-07-27 |  |  |
| 60 | 2.11.1.1 | 个人 | 2d | 2012-07-24 | 2012-07-25 | 55 |  |
| 61 | 2.11.1.2 | 管理员 | 2d | 2012-07-26 | 2012-07-27 | 60 |  |
| 62 | 2.12 | **资源管理** | 34d | 2012-06-11 | 2012-07-26 |  | Lei Zhang; Naizheng Wang; Chao Liu |
| 63 | 2.12.1 | **管理员功能** | 20d | 2012-06-11 | 2012-07-06 |  | Chao Liu |
| 64 | 2.12.1.1 | 服务器管理 | 3d | 2012-06-11 | 2012-06-13 |  |  |
| 65 | 2.12.1.2 | 内存管理 | 2d | 2012-06-14 | 2012-06-15 | 64 |  |
| 66 | 2.12.1.3 | 硬盘管理 | 2d | 2012-06-18 | 2012-06-19 | 65 |  |
| 67 | 2.12.1.4 | CPU管理 | 2d | 2012-06-20 | 2012-06-21 | 66 |  |
| 68 | 2.12.1.5 | 虚拟机管理 | 3d | 2012-06-22 | 2012-06-26 | 67 |  |
| 69 | 2.12.1.6 | 带宽管理 | 2d | 2012-06-27 | 2012-06-28 | 68 |  |
| 70 | 2.12.1.7 | IP管理(公有，私有) | 2d | 2012-06-29 | 2012-07-02 | 69 |  |
| 71 | 2.12.1.8 | 镜像管理 | 2d | 2012-07-03 | 2012-07-04 | 70 |  |
| 72 | 2.12.1.9 | 模板管理 | 2d | 2012-07-05 | 2012-07-06 | 71 |  |
| 73 | 2.12.2 | **个人用户功能** | 14d | 2012-07-09 | 2012-07-26 | 63 | Lei Zhang; Chao Liu |
| 74 | 2.12.2.1 | 内存管理 | 2d | 2012-07-09 | 2012-07-10 | 63 |  |
| 75 | 2.12.2.2 | 硬盘管理 | 2d | 2012-07-11 | 2012-07-12 | 74 |  |
| 76 | 2.12.2.3 | CPU管理 | 2d | 2012-07-13 | 2012-07-16 | 75 |  |
| 77 | 2.12.2.4 | 虚拟机管理 | 2d | 2012-07-17 | 2012-07-18 | 76 |  |
| 78 | 2.12.2.5 | 带宽管理 | 2d | 2012-07-19 | 2012-07-20 | 77 |  |
| 79 | 2.12.2.6 | IP管理 | 2d | 2012-07-23 | 2012-07-24 | 78 |  |
| 80 | 2.12.2.7 | 镜像管理 | 2d | 2012-07-25 | 2012-07-26 | 79 |  |
| 81 | 2.13 | 虚拟机监控管理 | 3d | 2012-07-27 | 2012-07-31 | 62 | Chao Liu |

Notes:
- 55: 功能描述：提供管理员和普通用户的操作日志管理，用户对系统所做的操作以一定方式自动记录下来，以便在某种特定的情况下供操作人员查询。日志文件存放在产品器上，具备一定权限的管理员可以进行检索和查看。
- 57: 提供当前用户的操作日志管理，用户对系统所做的操作以一定方式自动记录下来，以便在某种特定的情况下供操作人员查询。日志文件存放在产品器上，具备一定权限的管理员可以进行检索和查看。
- 60: 功能描述：统计最近三个月内存使用率，以及硬盘容量使用率。
- 61: 功能描述：统计最近三个月内存使用率，以及硬盘容量使用率。
- 62: 功能描述：对系统所有硬件以及网络资源进行管理和监控，并可对任意资源进行多种操作。
- 64: 功能描述：显示总服务器数量，使用中服务器数量，停止中服务器数量，故障中服务器数量的列表，一旦点击列表的某一项，则在页面下方显示此项里面服务器的所有列表，并可选择其中任意一个服务器，了解服务器的详细信息以及各种操作。详细信息包括：服务器id，服务器标识，镜像，数据中心和带宽类型，配置标识，ip地址，带宽，开始时间，服务期限，剩余时间，运行状态等等。操作包括：产品体检，管理密钥，开机/关机，连接服务器，删除，延续服务，变更等等。
- 65: 功能描述：显示总内存大小，使用中内存大小，未使用内存大小，预留内存大小的列表，一旦点击列表的某一项，则在页面下方显示此项里面内存使用的所有列表，并可选择其中任意一项，了解此项内存使用情况的详细信息以及各种操作。详细信息包括：内存id，所属服务器，总大小，此项占用大小，使用用户，开始时间，服务期限，剩余时间，运行状态等等。操作包括：产品体检，删除，延续服务，变更等等。
- 66: 功能描述：显示总硬盘容量，使用中硬盘容量，未使用硬盘容量，预留硬盘容量的列表，一旦点击列表的某一项，则在页面下方显示此项里面硬盘使用的所有列表，并可选择其中任意一项，了解此项硬盘使用情况的详细信息以及各种操作。详细信息包括：硬盘id，所属服务器，总容量，此项占用容量，使用用户，开始时间，服务期限，剩余时间，运行状态等等。操作包括：产品体检，删除，延续服务，变更等等。
- 67: 功能描述：显示总CPU数量，使用中CPU数量，未使用CPU数量，预留CPU数量的列表，一旦点击列表的某一项，则在页面下方显示此项里面CPU的所有列表，并可选择其中任意一列，了解此列CPU的详细信息以及各种操作。详细信息包括：CPU id，所属服务器，厂家，型号，主频，缓存大小，使用用户，开始时间，服务期限，剩余时间，运行状态等等。操作包括：产品体检，删除，延续服务，变更等等。
- 68: 功能描述：显示总虚拟机数量，使用中虚拟机数量，未使用虚拟机数量的列表，一旦点击列表的某一项，则在页面下方显示此项里面虚拟机的所有列表，并可选择其中任意一列，了解此列虚拟机的详细信息以及各种操作。详细信息包括：虚拟机id，虚拟机标识，镜像，数据中心和带宽类型，配置标识，ip地址，带宽，所属安全组，使用用户，开始时间，服务期限，剩余时间，运行状态等等。操作包括：产品体检，管理密钥，开机/关机，连接服务器，删除，延续服务，变更等等。
- 69: 功能描述：显示所有用户使用带宽情况列表。
- 70: 功能描述：显示总IP数量，使用中IP数量，未使用IP数量的列表，以及预留的IP地址段，一旦点击列表的某一项，则在页面下方显示此项里面IP的所有列表，并可选择其中任意一列，了解此列IP的详细使用情况以及各种操作。详细信息包括：ip，使用用户，绑定虚拟机id，开始时间，服务期限，剩余时间，使用状态等等。操作包括：删除，延续服务，变更等等。而且，IP分公有IP与私有IP，两种IP显示可以方便的进行切换。
- 71: 功能描述：提供对所有镜像的管理。包含上传镜像，注册镜像，绑定镜像，删除镜像等功能。
- 72: 功能描述：提供对模板的管理。包含添加模板，删除模板，编辑模板，查询模板等功能。模板包含模板id，CPU，内存，硬盘，带宽，镜像等元素。
- 74: 功能描述：显示我的内存大小，使用中内存大小，未使用内存大小，一旦点击列表的某一项，则在页面下方显示此项里面内存使用的所有列表，并可选择其中任意一项，了解此项内存使用情况的详细信息以及各种操作。详细信息包括：内存id，所属服务器，总大小，此项占用大小，开始时间，服务期限，剩余时间，运行状态等等。操作包括：延续服务。
- 75: 功能描述：显示我的硬盘容量，使用中硬盘容量，未使用硬盘容量的列表，一旦点击列表的某一项，则在页面下方显示此项里面硬盘使用的所有列表，并可选择其中任意一项，了解此项硬盘使用情况的详细信息以及各种操作。详细信息包括：硬盘id，所属服务器，总容量，此项占用容量，开始时间，服务期限，剩余时间，运行状态等等。操作包括：延续服务。
- 76: 功能描述：显示我的CPU数量，使用中CPU数量，未使用CPU数量，一旦点击列表的某一项，则在页面下方显示此项里面CPU的所有列表，并可选择其中任意一列，了解此列CPU的详细信息以及各种操作。详细信息包括：CPU id，所属服务器，厂家，型号，主频，缓存大小，开始时间，服务期限，剩余时间，运行状态等等。操作包括：延续服务等等。
- 77: 功能描述：显示我的虚拟机数量，使用中虚拟机数量，未使用虚拟机数量的列表，一旦点击列表的某一项，则在页面下方显示此项里面虚拟机的所有列表，并可选择其中任意一列，了解此列虚拟机的详细信息以及各种操作。详细信息包括：虚拟机id，虚拟机标识，镜像，数据中心和带宽类型，配置标识，ip地址，带宽，所属安全组，开始时间，服务期限，剩余时间，运行状态等等。操作包括：管理密钥，开机/关机，连接服务器，延续服务等等。
- 78: 功能描述：显示当前用户使用带宽情况列表。
- 79: 功能描述：显示我的IP数量，使用中IP数量，未使用IP数量的列表，一旦点击列表的某一项，则在页面下方显示此项里面IP的所有列表，并可选择其中任意一列，了解此列IP的详细使用情况以及各种操作。详细信息包括：ip，使用用户，绑定虚拟机id，开始时间，服务期限，剩余时间，使用状态等等。操作包括：延续服务。而且，IP分公有IP与私有IP，两种IP显示可以方便的进行切换。
- 80: 功能描述：提供对我的镜像的管理。包含上传镜像，注册镜像，绑定镜像，删除镜像等功能。
- 81: 功能描述：支持对虚拟机的运行状态进行监控，虚拟机出故障时可以重启虚拟机。支持对主机的运行状态进行监控，主机出故障时可以重启主机上的虚拟机。支持对集群的运行状态进行监控，以提高集群的可用性。告警按照故障的严重程度分级，可选的分级包括：紧急、主要、次要等等。对配置更改、资源不足、设备故障等情况触发告警时，上报告警告。

| ID | WBS | Task | Duration | Start | Finish | Predecessors | Resources |
| --- | --- | --- | --- | --- | --- | --- | --- |
| 82 | 3 | **项目测试** | 10d | 2012-08-01 | 2012-08-14 | 8 | Lei Zhang; Naizheng Wang; Chao Liu |
| 83 | 3.1 | 功能完备性测试 | 5d | 2012-08-01 | 2012-08-07 |  | Lei Zhang; Naizheng Wang; Chao Liu |
| 84 | 3.2 | 功能正确性测试 | 5d | 2012-08-01 | 2012-08-07 |  | Lei Zhang; Naizheng Wang; Chao Liu |
| 85 | 3.3 | 项目自完善 | 5d | 2012-08-08 | 2012-08-14 | 83, 84 | Lei Zhang; Naizheng Wang; Chao Liu |
| 86 | 4 | 项目Demo提交 | 5d | 2012-08-15 | 2012-08-21 | 82 | Lei Zhang |
| 87 | 5 | 项目完善 | 5d | 2012-08-22 | 2012-08-28 | 86 | Lei Zhang; Naizheng Wang; Chao Liu |
| 88 | 6 | 项目验收 | 1d | 2012-08-29 | 2012-08-29 | 87 | Lei Zhang; Naizheng Wang; Chao Liu |
